# 草海典型性水域水生态保护与修复工程勘察、设计、施工总承包（EPC）

Schedule from a web Gantt chart, 2023-06-18 to 2025-06-16.
Every day is a working day

## Schedule

| ID | WBS | Task | Duration | Start | Finish | Predecessors | Status |
| --- | --- | --- | --- | --- | --- | --- | --- |
| 2 | 1 | **勘察阶段** | 30d | 2023-06-18 | 2023-07-17 |  |  |
| 3 | 1.1 | 地质勘察 | 20d | 2023-06-18 | 2023-07-07 |  |  |
| 4 | 1.2 | 底泥检测 | 21d | 2023-06-18 | 2023-07-08 |  |  |
| 5 | 1.3 | 工程测量 | 30d | 2023-06-18 | 2023-07-17 |  |  |
| 6 | 2 | **设计阶段** | 50d | 2023-07-18 | 2023-09-05 |  |  |
| 7 | 2.1 | 初步设计 | 30d | 2023-07-18 | 2023-08-16 |  | waiting |
| 8 | 2.2 | 施工图设计 | 20d | 2023-08-17 | 2023-09-05 | 7 | waiting |
| 9 | 3 | **施工阶段** | 650d | 2023-09-06 | 2025-06-16 |  |  |
| 10 | 3.1 | **施工准备** | 45d | 2023-09-06 | 2023-10-20 |  |  |
| 11 | 3.1.1 | 施工便道建设 | 15d | 2023-09-06 | 2023-09-20 | 8 | waiting |
| 12 | 3.1.2 | 淤泥固化场地建设 | 45d | 2023-09-06 | 2023-10-20 | 8 | waiting |
| 13 | 3.1.3 | 临时设施建设 | 20d | 2023-09-06 | 2023-09-25 | 8 | waiting |
| 14 | 3.2 | **入湖口湿地恢复** | 620d | 2023-09-06 | 2025-05-17 |  |  |
| 15 | 3.2.1 | 生态围隔布设 | 15d | 2023-09-06 | 2023-09-20 | 8 | waiting |
| 16 | 3.2.2 | 表层浮泥清除 | 110d | 2024-01-01 | 2024-04-19 |  |  |
| 17 | 3.2.3 | 鱼类种群结构调整（清除小杂鱼） | 10d | 2024-04-20 | 2024-04-29 | 16 | waiting |
| 18 | 3.2.4 | 水生植物恢复 | 124d | 2024-04-30 | 2024-08-31 | 17 | waiting |
| 19 | 3.2.5 | 湿地维护（含水生植物补种） | 259d | 2024-09-01 | 2025-05-17 | 18 | waiting |
| 20 | 3.3 | **敞水区湿地恢复** | 605d | 2023-09-21 | 2025-05-17 |  |  |
| 21 | 3.3.1 | 生态围隔布设 | 10d | 2023-09-21 | 2023-09-30 | 15 | waiting |
| 22 | 3.3.2 | 鱼类种群结构调整（清除小杂鱼） | 25d | 2023-10-01 | 2023-10-25 | 21 | waiting |
| 23 | 3.3.3 | 水生植物恢复工程 | 120d | 2024-02-01 | 2024-05-30 |  |  |
| 24 | 3.3.4 | 湿地维护（含水生植物补种） | 352d | 2024-05-31 | 2025-05-17 | 23 | waiting |
| 25 | 3.4 | **退耕还湖湿地修复** | 620d | 2023-09-06 | 2025-05-17 |  |  |
| 26 | 3.4.1 | 底质改良 | 25d | 2023-09-06 | 2023-09-30 | 8 | waiting |
| 27 | 3.4.2 | 水系连通 | 10d | 2023-10-01 | 2023-10-10 | 26 | waiting |
| 28 | 3.4.3 | 鱼类群落结构调整（清除小杂鱼） | 30d | 2024-02-01 | 2024-03-01 |  |  |
| 29 | 3.4.4 | 水生植物恢复 | 60d | 2024-03-02 | 2024-04-30 | 28 | waiting |
| 30 | 3.4.5 | 鱼类群落结构调整（投放滤食性鱼类） | 20d | 2024-05-01 | 2024-05-20 | 29 | waiting |
| 31 | 3.4.6 | 湿地维护（含水生植物补种） | 362d | 2024-05-21 | 2025-05-17 | 30 | waiting |

| ID | WBS | Task | Duration | Start | Finish | Predecessors | Status |
| --- | --- | --- | --- | --- | --- | --- | --- |
| 32 | 3.5 | **水生态监管能力建设及跟踪监测** | 412d | 2024-05-01 | 2025-06-16 |  |  |
| 33 | 3.5.1 | 监测设备安装与调试 | 47d | 2024-05-01 | 2024-06-16 |  |  |
| 34 | 3.5.2 | 施工过程中跟踪监测评估 | 365d | 2024-06-17 | 2025-06-16 | 33 | waiting |
| 35 | 3.6 | 工程竣工验收 | 30d | 2025-05-18 | 2025-06-16 | 19, 24, 31 | waiting |
