# 草海典型性水域水生态保护与修复工程勘察、设计、施工总承包（EPC）工期计划

Schedule from a web Gantt chart, 2023-08-10 to 2027-10-21.
Saturdays and Sundays are off

## Schedule

| ID | WBS | Task | Duration | Start | Finish | Predecessors | Status |
| --- | --- | --- | --- | --- | --- | --- | --- |
| 2 | 1 | **勘察设计** | 99d | 2023-08-10 | 2023-12-26 |  |  |
| 3 | 1.1 | 初步设计初稿 | 23d | 2023-08-10 | 2023-09-11 |  |  |
| 4 | 1.2 | 初步设计专家评审并根据意见调整 | 7d | 2023-09-04 | 2023-09-12 | 3 | waiting |
| 5 | 1.3 | 初步设计报市发改委及市财政审核 | 14d | 2023-09-11 | 2023-09-28 | 4 | waiting |
| 6 | 1.4 | 施工图设计初稿 | 14d | 2023-10-19 | 2023-11-07 |  | waiting |
| 7 | 1.5 | 施工图设计初稿根据意见调整 | 7d | 2023-11-08 | 2023-11-16 | 6 | waiting |
| 8 | 1.6 | 施工图设计报发改审批及财审 | 14d | 2023-11-17 | 2023-12-06 | 7 | waiting |
| 9 | 1.7 | 施工图设计根据意见调整 | 7d | 2023-12-07 | 2023-12-15 | 8 | waiting |
| 10 | 1.8 | 施工图设计重新报发改审批及财审 | 7d | 2023-12-18 | 2023-12-26 | 9 | waiting |
| 11 | 2 | **临时固化场地建设** | 62d | 2023-10-19 | 2024-01-12 |  |  |
| 12 | 2.1 | 固化场地清表及整平 | 7d | 2023-10-19 | 2023-10-27 |  | waiting |
| 13 | 2.2 | 固化场地建设及脱水设备安装 | 55d | 2023-10-30 | 2024-01-12 | 12 | waiting |
| 14 | 3 | **水生态修复工程** | 565d | 2023-10-19 | 2025-12-17 |  |  |
| 15 | 3.1 | 生态围隔-透水围隔构建 | 20d | 2023-10-19 | 2023-11-15 |  | waiting |
| 16 | 3.2 | 鱼类种群结构调整-清除鱼类 | 42d | 2023-11-16 | 2024-01-12 | 15 | waiting |
| 17 | 3.3 | 底质改良 | 10d | 2023-11-27 | 2023-12-08 |  |  |
| 18 | 3.4 | 清淤 | 90d | 2024-03-05 | 2024-07-08 |  |  |
| 19 | 3.5 | 退耕还湖湿地水生态修复 | 80d | 2024-03-05 | 2024-06-24 |  |  |
| 20 | 3.6 | 敞水区水生态修复 | 183d | 2024-03-05 | 2024-11-14 |  |  |
| 21 | 3.7 | 入湖河口湿地水生态修复 | 123d | 2024-06-03 | 2024-11-20 | 18 | waiting |
| 22 | 3.8 | 维护 | 314d | 2024-10-04 | 2025-12-17 | 19, 20, 21 | waiting |
| 23 | 4 | **水生态监管能力建设** | 1096d | 2023-08-10 | 2027-10-21 |  |  |
| 24 | 4.1 | 监测设备采购及安装 | 366d | 2023-08-10 | 2025-01-02 |  |  |
| 25 | 4.2 | 监测服务 | 730d | 2024-08-12 | 2027-05-28 | 24 | waiting |
